How a schedule from an exported table changed from version to version. A marks actual dates.

## Version 1 (saved 2025-10-10)

Note of the change: docs: Sync TASK-TRACKER.csv with completed tasks

| ID | Task | Start | Finish |
| --- | --- | --- | --- |
| TASK-001 | Add Dependencies | 2025-10-10 | 2025-10-10 |
| TASK-002 | Implement crawl_web() | 2025-10-10 | 2025-10-10 |
| TASK-003 | Implement ingest_doc() | 2025-10-10 | 2025-10-10 |
| TASK-004 | Test Web Crawling |  |  |
| TASK-005 | Test Document Processing |  |  |
| TASK-006 | Implement qdrant_find() | 2025-10-10 | 2025-10-10 |
| TASK-007 | Implement qdrant_store() | 2025-10-10 | 2025-10-10 |
| TASK-008 | Implement Ollama Embeddings | 2025-10-10 | 2025-10-10 |
| TASK-009 | Test Qdrant Operations |  |  |
| TASK-010 | Implement lightrag_query() | 2025-10-10 | 2025-10-10 |
| TASK-011 | Test LightRAG E2E |  |  |
| TASK-012 | Update Documentation | 2025-10-10 | 2025-10-10 |
| TASK-013 | Add CircuitBreaker Dependency |  |  |
| TASK-014 | Create call_orchestrator_api() |  |  |
| TASK-015 | Update All Orchestrator Calls |  |  |
| TASK-016 | Add Circuit State Metrics |  |  |
| TASK-017 | Handle CircuitBreakerError |  |  |
| TASK-018 | Test Circuit Breaker |  |  |
| TASK-019 | Load Test with Failures |  |  |
| TASK-020 | Add get_job_status() Tool |  |  |
| TASK-021 | Add Ansible Block/Rescue |  |  |
| TASK-022 | Setup Mypy |  |  |
| TASK-023 | Create Common Types Module |  |  |
| TASK-024 | Type Hints: MCP Server |  |  |
| TASK-025 | Type Hints: Orchestrator Main |  |  |
| TASK-026 | Type Hints: Orchestrator Core |  |  |
| TASK-027 | Type Hints: Agents |  |  |
| TASK-028 | Type Hints: API Endpoints |  |  |
| TASK-029 | Run Mypy Validation |  |  |
| TASK-030 | Add Mypy to CI/CD |  |  |
| TASK-031 | Setup Testing Framework |  |  |
| TASK-032 | Write Unit Tests |  |  |
| TASK-033 | Write Integration Tests |  |  |
| TASK-034 | Create Load Test Scripts |  |  |
| TASK-035 | Setup CI/CD Pipeline |  |  |
| TASK-036 | Configure Code Coverage |  |  |
| TASK-037 | Add Pre-commit Hooks |  |  |
| TASK-038 | Run Full Test Suite |  |  |
| TASK-039 | Document Testing Strategy |  |  |
| TASK-040 | API Reference Documentation |  |  |
| TASK-041 | Architecture Diagrams |  |  |
| TASK-042 | Troubleshooting Guide |  |  |
| TASK-043 | Deployment Guide |  |  |
| TASK-044 | Operational Runbook |  |  |
| TASK-045 | Update README |  |  |
| TASK-046 | Create Migration Guide |  |  |
| TASK-047 | MCP Server Dashboard |  |  |
| TASK-048 | Orchestrator Dashboard |  |  |
| TASK-049 | Circuit Breaker Dashboard |  |  |
| TASK-050 | Job Queue Dashboard |  |  |
| TASK-051 | High Error Rate Alert |  |  |
| TASK-052 | Circuit Breaker Alert |  |  |
| TASK-053 | High Latency Alert |  |  |
| TASK-054 | Queue Backup Alert |  |  |
| TASK-055 | Service Down Alert |  |  |
| TASK-056 | Setup SLO Tracking |  |  |
| TASK-057 | Document Monitoring |  |  |
| TASK-058 | Test Alert Firing |  |  |
| TASK-059 | Validate Dashboards |  |  |

## Version 2 (saved 2025-10-11)

Note of the change: docs: Update tracking documents - Phase 1 Complete (21/21 tasks)

Last finish stays 2025-10-10.

Changed:

| ID | Task | Start | Finish |
| --- | --- | --- | --- |
| TASK-004 | Test Web Crawling | none → 2025-10-10 | none → 2025-10-10 |
| TASK-005 | Test Document Processing | none → 2025-10-10 | none → 2025-10-10 |
| TASK-009 | Test Qdrant Operations | none → 2025-10-10 | none → 2025-10-10 |
| TASK-011 | Test LightRAG E2E | none → 2025-10-10 | none → 2025-10-10 |
| TASK-013 | Add CircuitBreaker Dependency | none → 2025-10-10 | none → 2025-10-10 |
| TASK-014 | Create call_orchestrator_api() | none → 2025-10-10 | none → 2025-10-10 |
| TASK-015 | Update All Orchestrator Calls | none → 2025-10-10 | none → 2025-10-10 |
| TASK-016 | Add Circuit State Metrics | none → 2025-10-10 | none → 2025-10-10 |
| TASK-017 | Handle CircuitBreakerError | none → 2025-10-10 | none → 2025-10-10 |
| TASK-018 | Test Circuit Breaker | none → 2025-10-10 | none → 2025-10-10 |
| TASK-019 | Load Test with Failures | none → 2025-10-10 | none → 2025-10-10 |
| TASK-020 | Add get_job_status() Tool | none → 2025-10-10 | none → 2025-10-10 |
| TASK-021 | Add Ansible Block/Rescue | none → 2025-10-10 | none → 2025-10-10 |
